How a schedule from MS Project changed from version to version. A marks actual dates.

## Version 1 (saved 2026-10-19, file Факт.mpp)

Note of the change: Some update

| ID | WBS | Task | Duration | Start | Finish | Predecessors | Complete | Total float | Constraint |
| --- | --- | --- | --- | --- | --- | --- | --- | --- | --- |
| 1 |  | 1. Начало проекта | 0d | 2026-10-01 A | 2026-10-01 A |  | 100% |  |  |
| 2 | 2 | **2. Анализ и сбор требований** | 24d | 2026-10-01 A | 2026-11-03 A |  | 100% |  |  |
| 3 |  | 3. Встреча с заказчиком | 2d | 2026-10-01 A | 2026-10-02 A | 1 | 100% |  |  |
| 4 |  | 4. Написание документа требований | 10d | 2026-10-05 A | 2026-10-16 A | 3 | 100% |  |  |
| 5 |  | 5. Тестирование требований | 3d | 2026-10-19 A | 2026-10-21 A | 4 | 100% |  |  |
| 6 |  | 6. Встреча с заказчиком | 1d | 2026-10-26 A | 2026-10-26 A | 5FS+2d | 100% |  |  |
| 7 |  | 7. Подготовка договора и устава проекта | 4d | 2026-10-27 A | 2026-10-30 A | 6 | 100% |  |  |
| 8 |  | 8. Согласование договора | 1d | 2026-11-02 A | 2026-11-02 A | 7 | 100% |  |  |
| 9 |  | 9. Согласование устава проекта | 2d | 2026-11-02 A | 2026-11-03 A | 7 | 100% |  |  |
| 10 |  | 10. Утверждение договора и устава проекта | 0d | 2026-11-03 A | 2026-11-03 A | 8, 9 | 100% |  |  |
| 11 | 3 | **11. Проектирование решения** | 129.7d | 2026-11-04 A | 2027-05-13 |  | 95% | 0d |  |
| 12 |  | 12. Написание и согласование ТЗ | 15.62d | 2026-11-04 A | 2026-11-25 | 10 | 99% | 114.08d |  |
| 13 |  | 13. Утверждение ТЗ | 0d | 2026-11-25 | 2026-11-25 | 12 |  | 114.08d |  |
| 14 |  | 14. Обучение специалистов предметной области | 3.41d | 2026-11-30 A | 2026-12-03 A | 13 | 100% |  |  |
| 15 |  | 15. Проектирование архитектуры решения | 5.5d | 2026-12-03 A | 2026-12-15 A | 14 | 100% |  |  |
| 16 |  | 16. Тестирование архитектуры решения | 5.35d | 2027-05-05 A | 2027-05-13 | 15 | 56% | 0.1d | as late as possible |
| 17 |  | 17. Установка средств разработки и тестирования | 7.81d | 2026-11-30 A | 2026-12-10 A | 13 | 100% |  |  |
| 18 |  | 18. Написание тест-плана и вариантов тестирования | 6.6d | 2026-11-30 A | 2026-12-08 A | 13 | 100% |  |  |
| 19 |  | 19. Встреча с заказчиком | 1.1d | 2026-12-08 A | 2026-12-09 A | 18 | 100% |  |  |
| 20 | 4 | **20. Разработка и внутреннее тестирование** | 76d | 2026-12-09 | 2027-03-31 |  |  | 0d |  |
| 21 |  | 21. Встреча разработчиков, декомпозиция задач, назначение отвественных | 1d | 2026-12-09 | 2026-12-10 | 19 |  | 0d |  |
| 22 |  | 22. Программирование | 45d | 2026-12-10 | 2027-02-17 | 21 |  | 0d |  |
| 23 |  | 23. Улучшение кода | 11d | 2027-02-17 | 2027-03-04 | 22 |  | 0d |  |
| 24 |  | 24. Встреча разработчиков для предварительной демонстрации | 1d | 2027-03-04 | 2027-03-05 | 23 |  | 0d |  |
| 25 |  | 25. Демонстрация заказчику | 1d | 2027-03-05 | 2027-03-07 | 24 |  | 0d |  |
| 26 |  | 26. Первая установка решения в среду тестирования | 5d | 2027-03-07 | 2027-03-15 | 25 |  | 0d |  |
| 27 |  | 27. Прохождение тест-кейсов | 12d | 2027-03-15 | 2027-03-31 | 26 |  | 0d |  |
| 28 |  | 28. Внутреннее тестирование | 0d | 2027-03-31 | 2027-03-31 | 27 |  | 0d |  |
| 29 | 5 | **29. Тестирование на стороне заказчика** | 18d | 2027-03-31 | 2027-04-29 |  |  | 0d |  |
| 30 |  | 30. Первая установка в тестовую среду заказчика | 4d | 2027-03-31 | 2027-04-06 | 28 |  | 0d |  |
| 31 |  | 31. Поставки бета-версий | 4d | 2027-04-06 | 2027-04-12 | 30 |  | 0d |  |
| 32 |  | 32. Доработка и исправление неисправностей | 10d | 2027-04-12 | 2027-04-29 | 31 |  | 0d |  |
| 33 |  | 33. Прохождение тестирования на стороне | 0d | 2027-04-29 | 2027-04-29 | 32 |  | 0d |  |
| 34 | 6 | **34. Внедрение** | 9.88d | 2027-04-29 | 2027-05-13 |  |  | 0d |  |
| 35 |  | 35. Установка на рабочий сервер | 0d | 2027-04-30 | 2027-04-30 | 33 |  | 8.2d | finish no earlier than 2027-04-30 |
| 36 |  | 36. Написание инструкций | 5d | 2027-04-29 | 2027-05-06 | 33 |  | 4.88d |  |
| 37 |  | 37. Обучение пользователей | 2d | 2027-05-11 | 2027-05-13 | 33 |  | 0d |  |
| 38 |  | 38. Завершение внедрения | 0d | 2027-05-13 | 2027-05-13 | 35, 36, 37 |  | 0d |  |
| 39 |  | 39. Конец проекта | 0d | 2027-05-13 | 2027-05-13 | 38 |  | 0d |  |

## Version 2 (saved 2026-10-27, file По_Задачам.mpp)

Note of the change: Some update

Last finish 2027-05-13 → 2027-08-24 (+103d). Complete tasks 14 → 10.

Changed:

| ID | Task | Start | Finish | Duration | Complete | Total float | Other |
| --- | --- | --- | --- | --- | --- | --- | --- |
| 11 | **11. Проектирование решения** | 2026-11-04 A → 2026-11-04 | 2027-05-13 → 2027-08-24 (+103d) | 129.7d → 203.38d | 95% → 0% |  |  |
| 12 | 12. Написание и согласование ТЗ | 2026-11-04 A → 2026-11-04 |  | 15.62d → 15d | 99% → 0% | 114.08d → 100.59d | resources бизнес-аналитик; бумага для принтера [1.04 уп]; интернет [0.1%]; картридж [1.04 ед]; компьютер [1.04 шт]; технический лидер → бизнес-аналитик; бумага для принтера [1 уп]; интернет [0.1%]; картридж [1 ед]; компьютер [1 шт]; технический лидер |
| 14 | 14. Обучение специалистов предметной области | 2026-11-30 A → 2026-11-25 (-5d) | 2026-12-03 A → 2026-11-30 (-3d) |  | 100% → 0% | none → 95.72d |  |
| 15 | 15. Проектирование архитектуры решения | 2026-12-03 A → 2026-11-30 (-3d) | 2026-12-15 A → 2026-12-09 (-6d) | 5.5d → 5d | 100% → 0% | none → 95.72d |  |
| 16 | 16. Тестирование архитектуры решения | 2027-05-05 A → 2027-08-18 (+105d) | 2027-05-13 → 2027-08-24 (+103d) | 5.35d → 4.75d | 56% → 0% | 0.1d → 0d |  |
| 17 | 17. Установка средств разработки и тестирования | 2026-11-30 A → 2026-11-25 (-5d) | 2026-12-10 A → 2026-12-04 (-6d) | 7.81d → 7.41d | 100% → 0% | none → 103.47d |  |
| 18 | 18. Написание тест-плана и вариантов тестирования | 2026-11-30 A → 2026-11-25 (-5d) | 2026-12-08 A → 2026-12-03 (-5d) | 6.6d → 6d | 100% → 0% | none → 108.75d |  |
| 19 | 19. Встреча с заказчиком | 2026-12-08 A → 2026-12-03 (-5d) | 2026-12-09 A → 2026-12-04 (-5d) | 1.1d → 1d | 100% → 0% | none → 108.75d |  |
| 20 | **20. Разработка и внутреннее тестирование** | 2026-12-09 → 2026-12-04 A (-5d) | 2027-03-31 → 2027-07-14 (+105d) | 76d → 151.62d | 0% → 50% |  |  |
| 21 | 21. Встреча разработчиков, декомпозиция задач, назначение отвественных | 2026-12-09 → 2026-12-04 A (-5d) | 2026-12-10 → 2027-03-25 A (+105d) | 1d → 75.62d | 0% → 100% | 0d → none |  |
| 22 | 22. Программирование | 2026-12-10 → 2027-03-26 (+106d) | 2027-02-17 → 2027-06-02 (+105d) |  |  |  |  |
| 23 | 23. Улучшение кода | 2027-02-17 → 2027-06-02 (+105d) | 2027-03-04 → 2027-06-17 (+105d) |  |  |  |  |
| 24 | 24. Встреча разработчиков для предварительной демонстрации | 2027-03-04 → 2027-06-17 (+105d) | 2027-03-05 → 2027-06-18 (+105d) |  |  |  |  |
| 25 | 25. Демонстрация заказчику | 2027-03-05 → 2027-06-18 (+105d) | 2027-03-07 → 2027-06-21 (+106d) |  |  |  |  |
| 26 | 26. Первая установка решения в среду тестирования | 2027-03-07 → 2027-06-21 (+106d) | 2027-03-15 → 2027-06-28 (+105d) |  |  |  |  |
| 27 | 27. Прохождение тест-кейсов | 2027-03-15 → 2027-06-28 (+105d) | 2027-03-31 → 2027-07-14 (+105d) |  |  |  |  |
| 28 | 28. Внутреннее тестирование | 2027-03-31 → 2027-07-14 (+105d) | 2027-03-31 → 2027-07-14 (+105d) |  |  |  |  |
| 29 | **29. Тестирование на стороне заказчика** | 2027-03-31 → 2027-07-14 (+105d) | 2027-04-29 → 2027-08-09 (+102d) |  |  |  |  |
| 30 | 30. Первая установка в тестовую среду заказчика | 2027-03-31 → 2027-07-14 (+105d) | 2027-04-06 → 2027-07-20 (+105d) |  |  |  |  |
| 31 | 31. Поставки бета-версий | 2027-04-06 → 2027-07-20 (+105d) | 2027-04-12 → 2027-07-26 (+105d) |  |  |  |  |
| 32 | 32. Доработка и исправление неисправностей | 2027-04-12 → 2027-07-26 (+105d) | 2027-04-29 → 2027-08-09 (+102d) |  |  |  |  |
| 33 | 33. Прохождение тестирования на стороне | 2027-04-29 → 2027-08-09 (+102d) | 2027-04-29 → 2027-08-09 (+102d) |  |  |  |  |
| 34 | **34. Внедрение** | 2027-04-29 → 2027-08-09 (+102d) | 2027-05-13 → 2027-08-24 (+103d) | 9.88d → 11.75d |  |  |  |
| 35 | 35. Установка на рабочий сервер | 2027-04-30 → 2027-08-09 (+101d) | 2027-04-30 → 2027-08-09 (+101d) |  |  | 8.2d → 11.75d |  |
| 36 | 36. Написание инструкций | 2027-04-29 → 2027-08-09 (+102d) | 2027-05-06 → 2027-08-16 (+102d) |  |  | 4.88d → 6.75d |  |
| 37 | 37. Обучение пользователей | 2027-05-11 → 2027-08-23 (+104d) | 2027-05-13 → 2027-08-24 (+103d) |  |  |  |  |
| 38 | 38. Завершение внедрения | 2027-05-13 → 2027-08-24 (+103d) | 2027-05-13 → 2027-08-24 (+103d) |  |  |  |  |
| 39 | 39. Конец проекта | 2027-05-13 → 2027-08-24 (+103d) | 2027-05-13 → 2027-08-24 (+103d) |  |  |  |  |

## Version 3 (saved 2026-10-27, file По_Ресурсам.mpp)

Note of the change: Some update

Last finish stays 2027-08-24.

Changed:

| ID | Task | Start | Finish | Duration | Complete | Total float |
| --- | --- | --- | --- | --- | --- | --- |
| 29 | **29. Тестирование на стороне заказчика** | 2027-07-14 A | 2027-08-09 → 2027-08-10 (+1d) | 18d → 18.76d | 0% → 52% |  |
| 30 | 30. Первая установка в тестовую среду заказчика | 2027-07-14 A |  |  | 0% → 48% | 0d → 4.75d |
| 31 | 31. Поставки бета-версий | 2027-07-20 A | 2027-07-26 → 2027-07-27 (+1d) | 4d → 4.76d | 0% → 99% | 0d → 1.72d |
| 32 | 32. Доработка и исправление неисправностей | 2027-07-26 → 2027-07-27 A (+1d) | 2027-08-09 → 2027-08-10 (+1d) |  | 0% → 31% |  |
| 33 | 33. Прохождение тестирования на стороне | 2027-08-09 → 2027-08-10 (+1d) | 2027-08-09 → 2027-08-10 (+1d) |  |  |  |
| 34 | **34. Внедрение** | 2027-08-09 → 2027-08-10 (+1d) |  | 11.75d → 10.99d |  |  |
| 35 | 35. Установка на рабочий сервер | 2027-08-09 → 2027-08-10 (+1d) | 2027-08-09 → 2027-08-10 (+1d) |  |  | 11.75d → 10.99d |
| 36 | 36. Написание инструкций | 2027-08-09 → 2027-08-10 (+1d) | 2027-08-16 → 2027-08-17 (+1d) |  |  | 6.75d → 5.99d |

## Version 4 (saved 2026-11-11, file Процент.mpp)

Note of the change: Some update

Last finish 2027-08-24 → 2027-05-04 (-112d). Complete tasks 10 → 9.

Changed:

| ID | Task | Start | Finish | Duration | Complete | Total float |
| --- | --- | --- | --- | --- | --- | --- |
| 11 | **11. Проектирование решения** |  | 2027-08-24 → 2027-05-04 (-112d) | 203.38d → 123d |  |  |
| 16 | 16. Тестирование архитектуры решения | 2027-08-18 → 2027-04-27 (-113d) | 2027-08-24 → 2027-05-04 (-112d) |  |  |  |
| 20 | **20. Разработка и внутреннее тестирование** | 2026-12-04 A → 2026-12-04 | 2027-07-14 → 2027-03-25 (-111d) | 151.62d → 76d | 50% → 0% | 1.92d → 0d |
| 21 | 21. Встреча разработчиков, декомпозиция задач, назначение отвественных | 2026-12-04 A → 2026-12-04 | 2027-03-25 A → 2026-12-07 (-108d) | 75.62d → 1d | 100% → 0% | none → 0d |
| 22 | 22. Программирование | 2027-03-26 → 2026-12-07 (-109d) | 2027-06-02 → 2027-02-11 (-111d) |  |  | 0.38d → 0d |
| 23 | 23. Улучшение кода | 2027-06-02 → 2027-02-11 (-111d) | 2027-06-17 → 2027-02-26 (-111d) |  |  | 0.38d → 0d |
| 24 | 24. Встреча разработчиков для предварительной демонстрации | 2027-06-17 → 2027-02-26 (-111d) | 2027-06-18 → 2027-03-01 (-109d) |  |  | 0.38d → 0d |
| 25 | 25. Демонстрация заказчику | 2027-06-18 → 2027-03-01 (-109d) | 2027-06-21 → 2027-03-02 (-111d) |  |  | 0.38d → 0d |
| 26 | 26. Первая установка решения в среду тестирования | 2027-06-21 → 2027-03-02 (-111d) | 2027-06-28 → 2027-03-09 (-111d) |  |  | 0.38d → 0d |
| 27 | 27. Прохождение тест-кейсов | 2027-06-28 → 2027-03-09 (-111d) | 2027-07-14 → 2027-03-25 (-111d) |  |  | 0.38d → 0d |
| 28 | 28. Внутреннее тестирование | 2027-07-14 → 2027-03-25 (-111d) | 2027-07-14 → 2027-03-25 (-111d) |  |  | 0.38d → 0d |
| 29 | **29. Тестирование на стороне заказчика** | 2027-07-14 A → 2027-03-25 (-111d) | 2027-08-10 → 2027-04-23 (-109d) | 18.76d → 18d | 52% → 0% |  |
| 30 | 30. Первая установка в тестовую среду заказчика | 2027-07-14 A → 2027-03-25 (-111d) | 2027-07-20 → 2027-03-31 (-111d) |  | 48% → 0% | 4.75d → 0d |
| 31 | 31. Поставки бета-версий | 2027-07-20 A → 2027-03-31 (-111d) | 2027-07-27 → 2027-04-06 (-112d) | 4.76d → 4d | 99% → 0% | 1.72d → 0d |
| 32 | 32. Доработка и исправление неисправностей | 2027-07-27 A → 2027-04-06 (-112d) | 2027-08-10 → 2027-04-23 (-109d) |  | 31% → 0% |  |
| 33 | 33. Прохождение тестирования на стороне | 2027-08-10 → 2027-04-23 (-109d) | 2027-08-10 → 2027-04-23 (-109d) |  |  |  |
| 34 | **34. Внедрение** | 2027-08-10 → 2027-04-23 (-109d) | 2027-08-24 → 2027-05-04 (-112d) | 10.99d → 7d |  |  |
| 35 | 35. Установка на рабочий сервер | 2027-08-10 → 2027-04-30 (-102d) | 2027-08-10 → 2027-04-30 (-102d) |  |  | 10.99d → 1.5d |
| 36 | 36. Написание инструкций | 2027-08-10 → 2027-04-23 (-109d) | 2027-08-17 → 2027-04-30 (-109d) |  |  | 5.99d → 2d |
| 37 | 37. Обучение пользователей | 2027-08-23 → 2027-04-30 (-115d) | 2027-08-24 → 2027-05-04 (-112d) |  |  |  |
| 38 | 38. Завершение внедрения | 2027-08-24 → 2027-05-04 (-112d) | 2027-08-24 → 2027-05-04 (-112d) |  |  |  |
| 39 | 39. Конец проекта | 2027-08-24 → 2027-05-04 (-112d) | 2027-08-24 → 2027-05-04 (-112d) |  |  |  |
